# National Health Campaign

Schedule from MS Project, 2024-02-29 to 2024-04-29, costs in €, A marks actual dates.
Research Programme
ABC Research Ltd.

## Calendars

- Standard: Mon-Fri 08:00-12:00, 13:00-17:00; Sat-Sun off.

## Resources

| Resource | Group | Rate |
| --- | --- | --- |
| Joanne Kelly | Management | 19.23 |
| Riona Carr | Executive | 6.25 |
| Mary Breen | Management | 19.23 |
| Tom Joyce | Office Staff | 6.88 |
| Conf Room | Facilities |  |
| Junior Staff | Office Staff | 3.75 |
| Printing | External |  |

## Schedule

| ID | WBS | Task | Type | Duration | Start | Finish | Predecessors | Complete | Remaining | Baseline start | Baseline finish | Baseline duration | Total slack | Resources | Work | Actual work | Cost | Baseline cost | Actual cost |
| --- | --- | --- | --- | --- | --- | --- | --- | --- | --- | --- | --- | --- | --- | --- | --- | --- | --- | --- | --- |
| 1 | 1 | **National Health Campaign** |  | 42.5d | 2024-02-29 A | 2024-04-29 |  | 42% | 24.68d | 2024-02-29 | 2024-04-29 | 42.5d | 0d |  | 456h | 180h | 4,344.42 | 4,314.42 | 1,581.97 |
| 2 | 1.1 | **Planning** |  | 8d | 2024-02-29 A | 2024-03-11 |  | 48% | 4.17d | 2024-02-29 | 2024-03-11 | 8d | 0d |  | 96h | 46h | 517.69 | 487.69 | 307.69 |
| 3 | 1.1.1 | Design questionnaire | manual | 2d | 2024-02-29 A | 2024-03-01 A | 25 | 100% |  | 2024-02-29 | 2024-03-01 | 2d |  | Joanne Kelly | 16h | 16h | 307.69 | 307.69 | 307.69 |
| 4 | 1.1.2 | Type Questionnaire | manual | 2d | 2024-03-04 | 2024-03-05 | 3 |  |  | 2024-03-04 | 2024-03-04 | 1d |  | Junior Staff | 16h |  | 60 | 30 |  |
| 5 | 1.1.3 | Print Questionnaire | manual | 1w | 2024-03-05 A | 2024-03-11 | 4 | 75% | 0.25w | 2024-03-05 | 2024-03-11 | 1w |  | Printing | 40h | 30h |  |  |  |
| 6 | 1.1.4 | Invite Inteviewers to briefing meeting | manual | 3d | 2024-03-05 | 2024-03-07 | 5SS |  |  | 2024-03-05 | 2024-03-07 | 3d |  | Riona Carr | 24h |  | 150 | 150 |  |
| 7 | 1.1.5 | Survey planning complete | milestone, manual | 0d | 2024-03-08 | 2024-03-08 | 6, 3 |  |  | 2024-03-08 | 2024-03-08 | 0d |  |  |  |  |  |  |  |
| 8 | 1.2 | **Briefing Setup** |  | 12d | 2024-03-08 A | 2024-03-26 |  | 39% | 7.35d | 2024-03-08 | 2024-03-26 | 12d | 0d |  | 84h | 33h | 472.5 | 472.5 | 174.38 |
| 9 | 1.2.1 | Book conference room for briefing meeting | manual | 4h | 2024-03-08 A | 2024-03-08 | 5SS, 7 | 25% | 3h | 2024-03-08 | 2024-03-08 | 4h |  | Tom Joyce | 4h | 1h | 27.5 | 27.5 | 6.88 |
| 10 | 1.2.2 | Contact interviewing locations | manual | 2d | 2024-03-08 A | 2024-03-12 A | 9 | 100% |  | 2024-03-08 | 2024-03-12 | 2d |  | Tom Joyce | 16h | 16h | 110 | 110 | 110 |
| 11 | 1.2.3 | Prepare rosters | manual | 4d | 2024-03-14 | 2024-03-20 | 10, 9 |  |  | 2024-03-14 | 2024-03-20 | 4d |  | Tom Joyce | 32h |  | 220 | 220 |  |
| 12 | 1.2.4 | Prepare packs for each interview | manual | 3d | 2024-03-20 A | 2024-03-25 | 11, 10 | 50% | 1.5d | 2024-03-20 | 2024-03-25 | 3d |  | Junior Staff | 24h | 12h | 90 | 90 | 45 |
| 13 | 1.2.5 | Briefing Meeting with Interviewers | manual | 4h | 2024-03-25 A | 2024-03-25 | 12 | 50% | 2h | 2024-03-25 | 2024-03-25 | 4h |  | Riona Carr; Conf Room | 8h | 4h | 25 | 25 | 12.5 |
| 14 | 1.2.6 | Interviewers briefing complete | milestone, manual | 0d | 2024-03-26 A | 2024-03-26 | 13 | 25% | 0d | 2024-03-26 | 2024-03-26 | 0d |  |  |  |  |  |  |  |
| 15 | 1.3 | **Data Processing** |  | 20d | 2024-03-20 A | 2024-04-17 |  | 43% | 11.36d | 2024-03-20 | 2024-04-17 | 20d | 0d |  | 148h | 57h | 892.69 | 892.69 | 253.75 |
| 16 | 1.3.1 | Prepare Book-in forms | manual | 2d | 2024-03-26 A | 2024-03-27 A | 14 | 100% |  | 2024-03-26 | 2024-03-27 | 2d |  | Riona Carr | 16h | 16h | 100 | 100 | 100 |
| 17 | 1.3.2 | Check questionnaires | manual | 2d | 2024-03-28 A | 2024-03-29 | 16 | 50% | 1d | 2024-03-28 | 2024-03-29 | 2d |  | Junior Staff | 16h | 8h | 60 | 60 | 30 |
| 18 | 1.3.3 | Code questionnaires | manual | 1.5w | 2024-03-20 A | 2024-03-29 | 17FF | 25% | 1.12w | 2024-03-20 | 2024-03-29 | 1.5w |  | Junior Staff | 60h | 15h | 225 | 225 | 56.25 |
| 19 | 1.3.4 | Input data in computer | manual | 3d | 2024-03-27 A | 2024-03-29 | 18FS-3d | 75% | 0.75d | 2024-03-27 | 2024-03-29 | 3d |  | Junior Staff | 24h | 18h | 90 | 90 | 67.5 |
| 20 | 1.3.5 | Analyse the data | manual | 2d | 2024-04-15 | 2024-04-17 | 19 |  |  | 2024-04-15 | 2024-04-17 | 2d |  | Joanne Kelly; Tom Joyce | 32h |  | 417.69 | 417.69 |  |
| 21 | 1.3.6 | Data processing complete | milestone, manual | 0d | 2024-04-17 A | 2024-04-17 A | 20 | 100% |  | 2024-04-17 | 2024-04-17 | 0d |  |  |  |  |  |  |  |
| 22 | 1.4 | **Interpretation** |  | 42.5d | 2024-02-29 A | 2024-04-29 |  | 34% | 27.89d | 2024-02-29 | 2024-04-29 | 42.5d | 0d |  | 128h | 44h | 2,461.54 | 2,461.54 | 846.15 |
| 23 | 1.4.1 | Prepare presentation | manual | 3d | 2024-04-17 A | 2024-04-22 | 21 | 50% | 1.5d | 2024-04-17 | 2024-04-22 | 3d |  | Mary Breen; Joanne Kelly | 48h | 24h | 923.08 | 923.08 | 461.54 |
| 24 | 1.4.2 | Prepare research report | manual | 1w | 2024-04-22 A | 2024-04-29 | 23 | 25% | 0.75w | 2024-04-22 | 2024-04-29 | 1w |  | Mary Breen; Joanne Kelly | 80h | 20h | 1,538.46 | 1,538.46 | 384.62 |
| 25 | 1.4.3 | Project complete | milestone, manual | 0d | 2024-02-29 | 2024-02-29 |  |  |  | 2024-02-29 | 2024-02-29 | 0d |  |  |  |  |  |  |  |
